# Proyecto1_modificado

Schedule from MS Project, 2018-10-16 to 2019-10-16.

## Calendars

- Calendario_Alcobendas: Mon-Fri 09:00-13:00, 15:00-19:00; Sat-Sun off. Exceptions (off unless hours are given): 2018-11-01 (Todos los Santos), 2018-12-06 (Constitución española), 2018-12-08 (Inmaculada Concepción), 2018-12-25 (Natividad del Señor), 2019-01-01 (Año nuevo), 2019-01-07 (Epifania), 2019-01-25 (Virgen de la Paz), 2019-04-18 (Jueves Santo), 2019-04-19 (Viernes Santo), 2019-05-01 (Dia del trabajo), 2019-05-02 (Fiesta de la Comunidad de Madrid), 2019-05-13 (San Pedro Regalado), 2019-05-15 (San Isidro), 2019-08-15 (Asunción dela Virgen), 2019-09-08 (Virgen del billar), 2019-10-12 (Fiesta nacional de España).

## Resources

| Resource | Group |
| --- | --- |
| Empleado 1 (CC) | Control y Calidad |
| Empleado 2 (CC) | Control y Calidad |
| Empleado 3 (CC) | Control y Calidad |
| Empleado 4 (CC) | Control y Calidad |
| Empleado 5 (CC) | Control y Calidad |
| Empleado 6 (CC) | Control y Calidad |
| Empleado 7 (CC) | Control y Calidad |
| Empleado 8 (CC) | Control y Calidad |
| Empleado 9 (CC) | Control y Calidad |
| Empleado 10 (CC) | Control y Calidad |
| Empleado 1 (MV) | Márketing y Ventas |
| Empleado 2 (MV) | Márketing y Ventas |
| Empleado 3 (MV) | Márketing y Ventas |
| Empleado 4 (MV) | Márketing y Ventas |
| Empleado 5 (MV) | Márketing y Ventas |
| Empleado 6 (MV) | Márketing y Ventas |
| Empleado 7 (MV) | Márketing y Ventas |
| Empleado 8 (MV) | Márketing y Ventas |
| Empleado 9 (MV) | Márketing y Ventas |
| Empleado 10 (MV) | Márketing y Ventas |
| Empleado 1 (RH) | Recursos Humanos |
| Empleado 2 (RH) | Recursos Humanos |
| Empleado 3 (RH) | Recursos Humanos |
| Empleado 4 (RH) | Recursos Humanos |
| Empleado 5 (RH) | Recursos Humanos |
| Empleado 6 (RH) | Recursos Humanos |
| Empleado 7 (RH) | Recursos Humanos |
| Empleado 8 (RH) | Recursos Humanos |
| Empleado 9 (RH) | Recursos Humanos |
| Empleado 10 (RH) | Recursos Humanos |
| Empleado 1 (F) | Finanzas |
| Empleado 2 (F) | Finanzas |
| Empleado 3 (F) | Finanzas |
| Empleado 4 (F) | Finanzas |
| Empleado 5 (F) | Finanzas |
| Empleado 6 (F) | Finanzas |
| Empleado 7 (F) | Finanzas |
| Empleado 8 (F) | Finanzas |
| Empleado 9 (F) | Finanzas |
| Empleado 10 (F) | Finanzas |
| PMO | PMO |

## Schedule

| ID | WBS | Task | Duration | Start | Finish | Predecessors | Total slack | Free slack | Resources | Work |
| --- | --- | --- | --- | --- | --- | --- | --- | --- | --- | --- |
| 1 | 1 | **Proyecto Me Cuida** | 249d | 2018-10-16 | 2019-10-16 |  | 0d |  |  | 7950h |
| 2 | 1 | **Inicio** | 3d | 2018-10-16 | 2018-10-18 |  | 8d | 0d |  | 24h |
| 3 | 1.1.1 | **Acta de constitución del proyecto** | 2d | 2018-10-16 | 2018-10-17 |  | 8d | 0d |  | 16h |
| 4 | 1.1.1.1 | Business Case | 1d | 2018-10-16 | 2018-10-16 |  | 8d | 0d | PMO | 8h |
| 5 | 1.1.1.2 | Enunciado del proyecto | 1d | 2018-10-17 | 2018-10-17 | 4 | 8d |  | PMO | 8h |
| 6 | 1.1.2 | Plan de dirección del proyecto | 1d | 2018-10-18 | 2018-10-18 | 3 | 8d | 0d | PMO | 8h |
| 7 | 2 | **Análisis** | 19d | 2018-10-19 | 2018-11-15 | 2 | 8d | 0d |  | 280h |
| 8 | 2.1 | **Requerimientos** | 11d | 2018-10-19 | 2018-11-05 |  | 8d | 0d |  | 88h |
| 9 | 2.1.1 | **Plan de gestión del alcance** | 5d | 2018-10-19 | 2018-10-25 |  | 8d |  |  | 40h |
| 10 | 2.1.1.1 | Definición del alcance | 1d | 2018-10-19 | 2018-10-19 | 6 | 8d | 0d | PMO | 8h |
| 11 | 2.1.1.2 | Plan de gestión de los requisitos | 3d | 2018-10-22 | 2018-10-24 | 10 | 8d | 0d | PMO | 24h |
| 12 | 2.1.1.3 | Enunciado de alcance | 1d | 2018-10-25 | 2018-10-25 | 11 | 8d | 0d | PMO | 8h |
| 13 | 2.1.2 | WBS/EDT | 3d | 2018-10-26 | 2018-10-30 | 12 | 8d | 0d | PMO | 24h |
| 14 | 2.1.3 | Diccionario de la WBS | 3d | 2018-10-31 | 2018-11-05 | 13 | 8d | 0d | PMO | 24h |
| 15 | 2.2 | **Contexto y Riesgos** | 5d | 2018-11-06 | 2018-11-12 | 8 | 8d | 0d |  | 120h |
| 16 | 2.2.1 | Reuniones con asesores sobre riesgos inciales | 3d | 2018-11-06 | 2018-11-08 | 14 | 8d | 0d | PMO; Empleado 1 (CC); Empleado 2 (CC) | 72h |
| 17 | 2.2.2 | Reuniones para para establecer el contexto, necesidades y factores ambientales | 2d | 2018-11-09 | 2018-11-12 | 16 | 8d | 0d | PMO; Empleado 1 (CC); Empleado 2 (CC) | 48h |
| 18 | 2.3 | **Identificación de interesados** | 3d | 2018-11-13 | 2018-11-15 | 15 | 8d |  |  | 72h |
| 19 | 2.3.1 | Inicio y elaboración del registro de interesados | 3d | 2018-11-13 | 2018-11-15 | 17 | 8d | 0d | Empleado 1 (CC); Empleado 2 (CC); PMO | 72h |
| 20 | 3 | **Planificación** | 34d | 2018-11-16 | 2019-01-08 | 7 | 8d | 0d |  | 1256h |
| 21 | 3.1 | **Reuniones** | 5d | 2018-11-16 | 2018-11-22 |  | 8d | 0d |  | 360h |
| 22 | 3.1.1 | Reunión con cada potencial empresa a contratar y estimación del coste | 5d | 2018-11-16 | 2018-11-22 | 7, 19 | 8d | 0d | Empleado 1 (F); Empleado 1 (MV); Empleado 2 (MV); Empleado 2 (F); PMO [50%] | 180h |
| 23 | 3.1.2 | Generación de informe con datos reunidos | 5d | 2018-11-16 | 2018-11-22 | 7, 22SS | 8d | 0d | PMO [50%]; Empleado 3 (MV); Empleado 3 (F); Empleado 4 (MV); Empleado 4 (F) | 180h |
| 24 | 3.2 | **Cronograma** | 7d | 2018-11-23 | 2018-12-03 | 21 | 8d | 0d |  | 208h |
| 25 | 3.2.1 | Planificación de la gestión del cronograma | 2d | 2018-11-23 | 2018-11-26 | 21, 23, 22 | 8d | 0d | Empleado 1 (CC); Empleado 2 (CC); Empleado 3 (CC); PMO | 64h |
| 26 | 3.2.2 | Definción y secuencialización de actividades | 2d | 2018-11-27 | 2018-11-28 | 25 | 8d | 0d | Empleado 1 (CC); Empleado 2 (CC); Empleado 3 (CC); PMO | 64h |
| 27 | 3.2.3 | Estimación de duración de actividades | 2d | 2018-11-29 | 2018-11-30 | 26 | 8d | 0d | Empleado 1 (CC); Empleado 2 (CC); Empleado 3 (CC); PMO | 64h |
| 28 | 3.2.3 | Elaboración del cronograma | 1d | 2018-12-03 | 2018-12-03 | 27 | 8d | 0d | Empleado 1 (CC); PMO | 16h |

| ID | WBS | Task | Duration | Start | Finish | Predecessors | Total slack | Free slack | Resources | Work |
| --- | --- | --- | --- | --- | --- | --- | --- | --- | --- | --- |
| 29 | 3.3 | **Calidad y Validación** | 2d | 2018-12-04 | 2018-12-05 | 24 | 8d | 0d |  | 64h |
| 30 | 3.3.1 | **Gestión de la calidad** | 2d | 2018-12-04 | 2018-12-05 | 24 | 8d |  |  | 64h |
| 31 | 3.3.1.1 | Certificaciones requeridas | 2d | 2018-12-04 | 2018-12-05 | 24, 28 | 8d | 0d | Empleado 1 (CC); Empleado 2 (CC) | 32h |
| 32 | 3.3.1.2 | Definición de protocolo/s de calidad | 2d | 2018-12-04 | 2018-12-05 | 24, 31SS | 8d | 0d | Empleado 3 (CC); Empleado 4 (CC) | 32h |
| 33 | 3.4 | **Costes** | 4d | 2018-12-07 | 2018-12-12 | 29 | 8d | 0d |  | 128h |
| 34 | 3.4.1 | **Plan de gestión de Costes** | 4d | 2018-12-07 | 2018-12-12 | 29 | 8d |  |  | 128h |
| 35 | 3.4.1.1 | Selección de herramientas de estimación | 1d | 2018-12-07 | 2018-12-07 | 29, 32, 31 | 8d | 0d | Empleado 1 (CC); Empleado 1 (F); Empleado 2 (F); Empleado 3 (F) | 32h |
| 36 | 3.4.1.2 | Estimación de costes | 1d | 2018-12-10 | 2018-12-10 | 35 | 8d | 0d | Empleado 1 (CC); Empleado 1 (F); Empleado 2 (F); Empleado 3 (F) | 32h |
| 37 | 3.4.1.3 | Determinación de presupuesto | 2d | 2018-12-11 | 2018-12-12 | 36 | 8d | 0d | Empleado 1 (CC); Empleado 1 (F); Empleado 2 (F); Empleado 3 (F) | 64h |
| 38 | 3.5 | **Recursos Humanos** | 6d | 2018-12-13 | 2018-12-20 | 33 | 8d | 0d |  | 96h |
| 39 | 3.5.1 | **Plan de gestión de RRHH** | 2d | 2018-12-13 | 2018-12-14 | 33 | 8d | 0d |  | 32h |
| 40 | 3.5.1.1 | Asignación de responsabilidades | 1d | 2018-12-13 | 2018-12-13 | 33, 37 | 8d | 0d | Empleado 1 (RH); Empleado 2 (RH) | 16h |
| 41 | 3.5.1.2 | Asignación de personal | 1d | 2018-12-14 | 2018-12-14 | 40 | 8d | 0d | Empleado 1 (RH); Empleado 2 (RH) | 16h |
| 42 | 3.5.2 | **Plan de gestión de las comunicaciones** | 4d | 2018-12-17 | 2018-12-20 | 39 | 8d |  |  | 64h |
| 43 | 3.5.2.1 | Actualización de documentación generada | 4d | 2018-12-17 | 2018-12-20 | 39, 41 | 8d | 0d | Empleado 3 (RH); Empleado 4 (RH) | 64h |
| 44 | 3.6 | **Riesgos** | 10d | 2018-12-21 | 2019-01-08 | 38 | 8d |  |  | 400h |
| 45 | 3.6.1 | **Plan de gestión de riesgos** | 10d | 2018-12-21 | 2019-01-08 | 38 | 8d |  |  | 400h |
| 46 | 3.6.1.1 | Uso de los datos obtenidos en 2.2 | 1d | 2018-12-21 | 2018-12-21 | 38, 43 | 17d |  | Empleado 1 (CC) [50%]; Empleado 2 (CC) [50%]; Empleado 3 (CC) [50%]; Empleado 4 (CC) [50%]; PMO [50%] | 20h |
| 47 | 3.6.1.2 | Identificación de nuevos riesgos | 1d | 2018-12-21 | 2018-12-21 | 38, 43 | 8d | 0d | Empleado 1 (CC) [50%]; Empleado 2 (CC) [50%]; Empleado 3 (CC) [50%]; Empleado 4 (CC) [50%]; PMO [50%] | 20h |
| 48 | 3.6.1.3 | Análisis de cuantitativo de riesgos | 2d | 2018-12-24 | 2018-12-26 | 47 | 8d | 0d | Empleado 1 (CC); Empleado 2 (CC); Empleado 3 (CC); Empleado 4 (CC); PMO | 80h |
| 49 | 3.6.1.4 | Análisis cualitativo de riesgos | 2d | 2018-12-27 | 2018-12-28 | 48 | 8d | 0d | Empleado 1 (CC); Empleado 2 (CC); Empleado 3 (CC); Empleado 4 (CC); PMO | 80h |
| 50 | 3.6.1.5 | Planificación de respuesta ante riesgos | 5d | 2018-12-31 | 2019-01-08 | 49 | 8d | 0d | Empleado 1 (CC); Empleado 2 (CC); Empleado 3 (CC); Empleado 4 (CC); PMO | 200h |
| 51 | 4 | **Desarrollo** | 182d | 2019-01-09 | 2019-10-01 | 20 | 8d |  |  | 2762h |
| 52 | 4.1 | **Acuerdos** | 11d | 2019-01-09 | 2019-01-23 | 20 | 8d | 0d |  | 368h |
| 53 | 4.1.1 | **Elección de empresas** | 3d | 2019-01-09 | 2019-01-11 | 20 | 8d | 0d |  | 96h |
| 54 | 4.1.1.1 | Ánalisis de propuestas | 2d | 2019-01-09 | 2019-01-10 | 20, 50 | 8d | 0d | Empleado 1 (F); Empleado 1 (MV); Empleado 2 (MV); Empleado 2 (F) | 64h |
| 55 | 4.1.1.2 | Pliego de contratación | 1d | 2019-01-11 | 2019-01-11 | 54 | 8d |  | Empleado 1 (F); Empleado 1 (MV); Empleado 2 (MV); Empleado 2 (F) | 32h |
| 56 | 4.1.2 | Estipulación de condiciones de contrato/s | 5d | 2019-01-14 | 2019-01-18 | 53 | 8d | 0d | Empleado 1 (F); Empleado 1 (MV); Empleado 2 (MV); Empleado 2 (F); PMO | 200h |
| 57 | 4.1.3 | Firma de contrato/s | 3d | 2019-01-21 | 2019-01-23 | 56 | 8d | 0d | Empleado 1 (F); Empleado 2 (F); PMO | 72h |

| ID | WBS | Task | Duration | Start | Finish | Predecessors | Total slack | Constraint | Resources | Work |
| --- | --- | --- | --- | --- | --- | --- | --- | --- | --- | --- |
| 58 | 4.2 | **Control de procesos** | 171d | 2019-01-24 | 2019-10-01 | 52, 57 | 8d |  |  | 2394h |
| 59 | 4.2.1 | Control de costes | 171d | 2019-01-24 | 2019-10-01 | 52, 57 | 8d |  | Empleado 1 (CC) [25%]; Empleado 1 (F) [25%] | 684h |
| 60 | 4.2.2 | Control del cronograma | 171d | 2019-01-24 | 2019-10-01 | 57 | 8d |  | Empleado 2 (CC) [25%] | 342h |
| 61 | 4.2.3 | Registro de incidentes | 171d | 2019-01-24 | 2019-10-01 | 57 | 8d |  | Empleado 3 (CC) [25%] | 342h |
| 62 | .4.2.4 | Control de calidad | 171d | 2019-01-24 | 2019-10-01 | 57 | 8d |  | Empleado 4 (CC) [25%] | 342h |
| 63 | 4.2.5 | Control de riesgos | 171d | 2019-01-24 | 2019-10-01 | 57 | 8d |  | Empleado 5 (CC) [25%] | 342h |
| 64 | 4.2.6 | Actualización de documentación | 171d | 2019-01-24 | 2019-10-01 | 57 | 8d |  | Empleado 3 (CC) [25%] | 342h |
| 65 | 5 | **Formación** | 38d | 2019-02-12 | 2019-04-04 | 52 | 0d | start no earlier than 2019-02-12 |  | 1304h |
| 66 | 5.1 | **Modelo de formación** | 11d | 2019-02-12 | 2019-02-26 |  | 0d |  |  | 224h |
| 67 | 5.1.1 | Temario | 8d | 2019-02-12 | 2019-02-21 | 57 | 0d |  | Empleado 1 (RH); Empleado 2 (RH) | 128h |
| 68 | 5.1.2 | Sistema de formación | 3d | 2019-02-22 | 2019-02-26 | 67 | 0d |  | Empleado 1 (RH) [50%]; Empleado 2 (RH) [50%] | 24h |
| 69 | 5.1.3 | Plataforma | 3d | 2019-02-22 | 2019-02-26 | 67 | 0d |  | Empleado 3 (RH); Empleado 4 (RH) | 48h |
| 70 | 5.1.4 | Periodo de formación | 3d | 2019-02-22 | 2019-02-26 | 67 | 0d |  | Empleado 1 (RH) [50%]; Empleado 2 (RH) [50%] | 24h |
| 71 | 1.5.2 | **Formación del personal** | 9d | 2019-02-27 | 2019-03-11 | 66 | 0d |  |  | 408h |
| 72 | 5.2.1 | Personal técnico | 9d | 2019-02-27 | 2019-03-11 | 66 | 0d |  | Empleado 1 (RH); Empleado 2 (RH) | 144h |
| 73 | 5.2.2 | Personal médico | 6d | 2019-02-27 | 2019-03-06 | 66 | 3d | start no earlier than 2019-02-18 | Empleado 3 (RH); Empleado 4 (RH) | 96h |
| 74 | 5.2.3 | Pacientes | 7d | 2019-02-27 | 2019-03-07 | 66 | 2d |  | Empleado 5 (RH); Empleado 6 (RH); Empleado 7 (RH) | 168h |
| 75 | 5.3 | **Manuales** | 12d | 2019-03-12 | 2019-03-27 | 71 | 0d |  |  | 576h |
| 76 | 5.3.1 | Generación de manual de usuario para pacientes | 12d | 2019-03-12 | 2019-03-27 | 71, 72 | 0d |  | Empleado 5 (RH); Empleado 6 (RH) | 192h |
| 77 | 5.3.2 | Generación de manual de usuario para personal médico | 12d | 2019-03-12 | 2019-03-27 | 71, 76SS | 0d |  | Empleado 3 (RH); Empleado 4 (RH) | 192h |
| 78 | 5.3.3 | Generación de manual de usuario para técnicos | 12d | 2019-03-12 | 2019-03-27 | 71, 77SS | 0d |  | Empleado 1 (RH); Empleado 2 (RH) | 192h |
| 79 | 5.4 | **Certificación** | 6d | 2019-03-28 | 2019-04-04 | 75 | 0d |  |  | 96h |
| 80 | 5.4.1 | **Elaboración del examen de certificación** | 4d | 2019-03-28 | 2019-04-02 | 75 | 0d |  |  | 64h |
| 81 | 5.4.1.1 | Formato y plataforma del examen | 2d | 2019-03-28 | 2019-03-29 | 75, 78, 77, 76 | 0d |  | Empleado 1 (RH); Empleado 2 (RH) | 32h |
| 82 | 5.4.1.3 | Conocimientos mínimos | 2d | 2019-04-01 | 2019-04-02 | 81 | 0d |  | Empleado 1 (RH); Empleado 2 (RH) | 32h |
| 83 | 5.4.2 | Examinación | 2d | 2019-04-03 | 2019-04-04 | 80 | 0d |  | Empleado 1 (RH); Empleado 2 (RH) | 32h |

| ID | WBS | Task | Duration | Start | Finish | Predecessors | Total slack | Free slack | Constraint | Resources | Work |
| --- | --- | --- | --- | --- | --- | --- | --- | --- | --- | --- | --- |
| 84 | 6 | **Integración y pruebas** | 77d | 2019-04-05 | 2019-07-30 | 65 | 0d |  |  |  | 1556h |
| 85 | 6.1 | **Integración en muestra** | 65d | 2019-04-05 | 2019-07-12 | 65 | 0d |  |  |  | 520h |
| 86 | 1.6.1.1 | Reparto o instalación de dispositivos | 15d | 2019-04-05 | 2019-04-29 | 65, 83 | 0d |  |  | Empleado 4 (CC) [50%]; Empleado 5 (CC) [50%] | 120h |
| 87 | 6.1.2 | Comprobación del estado del sistema | 50d | 2019-04-30 | 2019-07-12 | 86 | 12d |  |  | Empleado 4 (CC) [25%]; Empleado 5 (CC) [25%] | 200h |
| 88 | 6.1.3 | Pruebas de ejecución | 50d | 2019-04-30 | 2019-07-12 | 86 | 12d |  |  | Empleado 1 (CC) [25%]; Empleado 2 (CC) [25%] | 200h |
| 89 | 6.2 | **Obtención de datos** | 55d | 2019-04-30 | 2019-07-19 | 86 | 0d |  |  |  | 660h |
| 90 | 6.2.1 | Unificación y clasificación de los datos | 55d | 2019-04-30 | 2019-07-19 | 86 | 7d |  |  | Empleado 6 (CC) [25%]; Empleado 7 (CC) [25%] | 220h |
| 91 | 6.2.2 | Procesado de los datos | 55d | 2019-04-30 | 2019-07-19 | 86 | 7d |  |  | Empleado 6 (CC) [25%]; Empleado 7 (CC) [25%] | 220h |
| 92 | 6.2.3 | Elaboración de informes y estadísticas | 55d | 2019-04-30 | 2019-07-19 | 86 | 0d |  |  | Empleado 6 (CC) [25%]; Empleado 7 (CC) [25%] | 220h |
| 93 | 6.3 | **Validación de resultados** | 62d | 2019-04-30 | 2019-07-30 |  | 0d |  |  |  | 376h |
| 94 | 1.6.3.1 | Criterios de validación | 60d | 2019-04-30 | 2019-07-26 | 92SS | 0d |  | start no earlier than 2019-04-22 | PMO [50%]; Empleado 1 (CC) [25%]; Empleado 2 (CC) [25%] | 360h |
| 95 | 1.6.3.2 | Toma de decisión | 2d | 2019-07-29 | 2019-07-30 | 94, 92 | 0d |  |  | PMO | 16h |
| 96 | 1.7 | **Cierre** | 55d | 2019-07-31 | 2019-10-16 | 93 | 0d |  |  |  | 768h |
| 97 | 7.1 | **Implementación final** | 52d | 2019-07-31 | 2019-10-11 | 84 | 0d |  |  |  | 720h |
| 98 | 1.7.1.1 | **Formación del personal** | 9d | 2019-07-31 | 2019-08-12 | 66 | 43d |  |  |  | 408h |
| 99 | 5.2.1 | Personal técnico | 9d | 2019-07-31 | 2019-08-12 | 66, 95 | 43d |  |  | Empleado 1 (RH); Empleado 2 (RH) | 144h |
| 100 | 5.2.2 | Personal médico | 6d | 2019-07-31 | 2019-08-07 | 66, 95 | 46d |  | start no earlier than 2019-02-18 | Empleado 3 (RH); Empleado 4 (RH) | 96h |
| 101 | 5.2.3 | Pacientes | 7d | 2019-07-31 | 2019-08-08 | 66, 95 | 45d |  |  | Empleado 5 (RH); Empleado 6 (RH); Empleado 7 (RH) | 168h |
| 102 | 5.4 | **Certificación** | 15d | 2019-07-31 | 2019-08-21 | 75 | 37d |  |  |  | 104h |
| 103 | 5.4.1 | **Elaboración del examen de certificación** | 13d | 2019-07-31 | 2019-08-19 | 75 | 37d | 0d |  |  | 72h |
| 104 | 5.4.1.1 | Formato y plataforma del examen | 2d | 2019-07-31 | 2019-08-01 | 75 | 37d | 0d |  | Empleado 8 (RH) | 16h |
| 105 | 5.4.1.3 | Conocimientos mínimos | 7d | 2019-08-02 | 2019-08-19 | 104 | 37d |  | start no earlier than 2019-07-15 | Empleado 8 (RH) | 56h |
| 106 | 5.4.2 | Examinación | 2d | 2019-08-20 | 2019-08-21 | 103 | 37d |  |  | Empleado 1 (RH); Empleado 2 (RH) | 32h |
| 107 | 7.1.1 | Reparto e instalación de dispositivos | 32d | 2019-07-31 | 2019-09-13 | 84, 95 | 0d |  |  | Empleado 3 (CC) [25%]; Empleado 4 (CC) [25%] | 128h |
| 108 | 7.1.2 | Comprobación del estado del sistema | 20d | 2019-09-16 | 2019-10-11 | 107, 64FF, 63FF, 62FF, 61FF, 60FF, 59FF | 0d |  |  | Empleado 1 (CC) [25%]; Empleado 2 (CC) [25%] | 80h |

| ID | WBS | Task | Duration | Start | Finish | Predecessors | Total slack | Resources | Work |
| --- | --- | --- | --- | --- | --- | --- | --- | --- | --- |
| 109 | 7.2 | **Documentación y cierre** | 3d | 2019-10-14 | 2019-10-16 | 97 | 0d |  | 48h |
| 110 | 7.2.1 | Generación de informe final | 1d | 2019-10-14 | 2019-10-14 | 97, 108 | 0d | Empleado 1 (CC); Empleado 2 (CC) | 16h |
| 111 | 7.2.2 | Valoración de resultados | 1d | 2019-10-15 | 2019-10-15 | 110 | 0d | PMO | 8h |
| 112 | 7.2.3 | Dar paso al servicio | 1d | 2019-10-16 | 2019-10-16 | 111 | 0d | Empleado 1 (CC); Empleado 2 (CC); PMO | 24h |
